Schedule from GanttProject, 2024-09-02 to 2024-12-27.

## Calendars

- Project calendar: Mon-Fri working; Sat-Sun off.

## Resources

| Resource |
| --- |
| Manager-QA |
| Test TL |
| Web TL |
| Back dev 1 |
| Back dev 2 |
| Back dev 3 |
| Architect+Devops |
| Front dev 1 |
| Front dev 2 |
| Front dev 3 |
| Sys dev 1 |
| Sys dev 2 |
| Sys dev 3 |
| Sys dev 4 |
| Test Analyst 1 |
| Test Analyst 2 |
| QA |

## Schedule

| ID | Task | Type | Duration | Start | Finish | Predecessors | Complete | Resources | Cost |
| --- | --- | --- | --- | --- | --- | --- | --- | --- | --- |
| 1 | Общее управление |  | 85d | 2024-09-02 | 2024-12-27 |  |  | Manager-QA | 40 |
| 2 | Web: управление |  | 75d | 2024-09-16 | 2024-12-27 |  |  | Web TL | 40 |
| 3 | Тесты: управление |  | 75d | 2024-09-16 | 2024-12-27 |  |  | Test TL | 40 |
| 4 | Фаза 0: подготовка | milestone | 0d | 2024-09-13 | 2024-09-13 |  |  |  |  |
| 5 | Фронт: инструкции |  | 5d | 2024-09-02 | 2024-09-06 |  |  | Manager-QA | 3 |
| 6 | Фронт: заготовка |  | 5d | 2024-09-09 | 2024-09-13 |  |  | Manager-QA | 6 |
| 7 | Бэк: инструкции |  | 5d | 2024-09-02 | 2024-09-06 |  |  | Web TL | 3 |
| 8 | Бэк: заготовка |  | 5d | 2024-09-09 | 2024-09-13 |  |  | Web TL | 4 |
| 9 | Схема данных |  | 5d | 2024-09-02 | 2024-09-06 |  |  | Architect+Devops | 6 |
| 10 | Описание API обвязки |  | 5d | 2024-09-09 | 2024-09-13 |  |  | Architect+Devops | 6 |
| 11 | Exec: демо |  | 5d | 2024-09-02 | 2024-09-06 |  |  | Test Analyst 1 | 4 |
| 12 | Exec: инструкции |  | 5d | 2024-09-09 | 2024-09-13 |  |  | Test Analyst 2 | 3 |
| 13 | Тесты: заготовка |  | 5d | 2024-09-02 | 2024-09-06 |  |  | Test TL | 6 |
| 14 | Описание API Exec |  | 5d | 2024-09-09 | 2024-09-13 |  |  | Test TL; Test Analyst 2 | 12 |
| 15 | Фаза 1 | milestone | 0d | 2024-10-25 | 2024-10-25 |  |  |  |  |
| 16 | Тесты: доанализ требований |  | 25d | 2024-09-16 | 2024-10-18 |  |  | Test Analyst 1 | 10 |
| 17 | Web: доанализ требований |  | 25d | 2024-09-16 | 2024-10-18 |  |  | Test Analyst 2 | 10 |
| 18 | Разработка тестовой методологии |  | 15d | 2024-09-16 | 2024-10-04 |  |  | Manager-QA | 10 |
| 19 | Изучение требований, терминологии, тестирования |  | 15d | 2024-09-16 | 2024-10-04 |  |  | QA | 15 |
| 20 | QA тестов 1 |  | 10d | 2024-10-07 | 2024-10-18 |  |  | Manager-QA [50%]; QA [50%] | 10 |
| 21 | Тесты: обучение |  | 5d | 2024-09-16 | 2024-09-20 |  |  | Sys dev 3; Sys dev 4 | 4 |
| 22 | Тесты исполняемого файла |  | 5d | 2024-09-23 | 2024-09-27 | 21 |  | Sys dev 3 | 2 |
| 23 | Тесты модуля конфигурации |  | 5d | 2024-09-23 | 2024-09-27 | 21 |  | Sys dev 4 | 2 |
| 24 | Тесты cli |  | 5d | 2024-09-30 | 2024-10-04 |  |  | Sys dev 3 | 2 |
| 25 | Тесты логгера |  | 5d | 2024-09-30 | 2024-10-04 |  |  | Sys dev 4 | 2 |
| 26 | Тесты IPC |  | 5d | 2024-10-07 | 2024-10-11 |  |  | Sys dev 3 | 2 |
| 27 | Тесты корректности кэша |  | 5d | 2024-10-07 | 2024-10-11 |  |  | Sys dev 4 | 2 |
| 28 | Интеграция: базовые тесты |  | 5d | 2024-10-14 | 2024-10-18 |  |  | Sys dev 1; Sys dev 2; Sys dev 3; Sys dev 4 | 16 |
| 29 | Exec: обучение |  | 5d | 2024-09-16 | 2024-09-20 |  |  | Sys dev 1; Sys dev 2 | 4 |
| 30 | Exec: запуск бинарника |  | 5d | 2024-09-23 | 2024-09-27 | 29 |  | Sys dev 1 | 4 |
| 31 | Exec: получение stdin |  | 5d | 2024-09-30 | 2024-10-04 | 30 |  | Sys dev 1 | 2 |
| 32 | Exec: получение сокета |  | 5d | 2024-09-30 | 2024-10-04 | 30 |  | Sys dev 2 | 2 |
| 33 | Exec: получение вывода |  | 5d | 2024-10-07 | 2024-10-11 | 30 |  | Sys dev 1 | 2 |
| 34 | Exec: получение статистик /proc |  | 5d | 2024-10-07 | 2024-10-11 | 30 |  | Sys dev 2 | 2 |
| 35 | Фронт: обучение |  | 5d | 2024-09-16 | 2024-09-20 |  |  | Front dev 1; Front dev 2; Front dev 3 | 6 |
| 36 | Авторизация пользователя |  | 5d | 2024-09-16 | 2024-09-20 |  |  | Back dev 1 | 4 |
| 37 | Изменение пароля |  | 5d | 2024-09-23 | 2024-09-27 | 36 |  | Back dev 1 | 4 |
| 38 | Получение групп для пользователя.. |  | 5d | 2024-09-30 | 2024-10-04 |  |  | Back dev 1 | 2 |
| 39 | Создание и редактирование группы |  | 5d | 2024-10-07 | 2024-10-11 | 38 |  | Back dev 1 | 2 |
| 40 | Интеграция: пользователи |  | 5d | 2024-10-14 | 2024-10-18 | 36, 37, 38, 39, 41, 42, 43, 44, 45, 46, 47 |  | Back dev 1; Front dev 1 | 8 |
| 41 | Восстановление пароля |  | 5d | 2024-09-23 | 2024-09-27 |  |  | Front dev 1 | 1 |
| 42 | Welcome страница |  | 5d | 2024-09-23 | 2024-09-27 |  |  | Front dev 1 | 1 |
| 43 | Страница входа |  | 5d | 2024-09-23 | 2024-09-27 |  |  | Front dev 1 | 1 |
| 44 | Навигация в шапке |  | 5d | 2024-09-30 | 2024-10-04 |  |  | Front dev 1 | 2 |
| 45 | Личный кабинет |  | 5d | 2024-09-30 | 2024-10-04 | 43 |  | Front dev 1 | 2 |
| 46 | Создание редактирование группы |  | 5d | 2024-10-07 | 2024-10-11 |  |  | Front dev 1 | 2 |
| 47 | Экран групп |  | 5d | 2024-10-07 | 2024-10-11 |  |  | Front dev 1 | 2 |
| 48 | Восстановление пароля |  | 5d | 2024-09-16 | 2024-09-20 |  |  | Back dev 2 | 1 |
| 49 | Имплементация создания теста |  | 5d | 2024-09-16 | 2024-09-20 |  |  | Back dev 2 | 2 |
| 50 | Имплементация получения теста |  | 5d | 2024-09-23 | 2024-09-27 | 49 |  | Back dev 2 | 1 |
| 51 | Имплементация поиска тестов по имени |  | 5d | 2024-09-23 | 2024-09-27 | 49 |  | Back dev 2 | 1 |
| 52 | Имплементация удаления тестов |  | 5d | 2024-09-30 | 2024-10-04 | 49 |  | Back dev 2 | 2 |
| 53 | Имплементация редактирования тестов |  | 5d | 2024-09-30 | 2024-10-04 | 49 |  | Back dev 2 | 1 |
| 54 | Интеграция: тесты |  | 5d | 2024-10-14 | 2024-10-18 | 49, 50, 51, 52, 53, 55, 56, 57, 58 |  | Back dev 2; Front dev 2 | 8 |
| 55 | Модальное окно создания теста |  | 5d | 2024-09-23 | 2024-09-27 |  |  | Front dev 2 | 3 |
| 56 | Модальное окно просмотра теста |  | 5d | 2024-09-30 | 2024-10-04 |  |  | Front dev 2 | 2 |
| 57 | Модальное окно редактирования теста |  | 5d | 2024-10-07 | 2024-10-11 |  | 30% | Front dev 2 | 1 |
| 58 | Страница просмотра тестов |  | 5d | 2024-10-07 | 2024-10-11 |  |  | Front dev 2 | 2 |
| 59 | Имплементация создания лабораторной |  | 5d | 2024-09-16 | 2024-09-20 |  |  | Back dev 3 | 2 |
| 60 | Имплементация получения лабораторной |  | 5d | 2024-09-16 | 2024-09-20 |  |  | Back dev 3 | 1 |
| 61 | Имплементация редактирования лабораторной |  | 5d | 2024-09-23 | 2024-09-27 | 59 |  | Back dev 3 | 1 |
| 62 | Имплементация удаления лабораторной |  | 5d | 2024-09-23 | 2024-09-27 | 59 |  | Back dev 3 | 2 |
| 63 | Получение попыток сдачи |  | 5d | 2024-09-30 | 2024-10-04 |  |  | Back dev 3 | 2 |
| 64 | Интеграция: лабораторные |  | 5d | 2024-10-14 | 2024-10-18 | 59, 60, 61, 62, 65, 66, 67, 68 |  | Back dev 2; Front dev 3 | 8 |
| 65 | Модальное окно создания лабораторной |  | 5d | 2024-09-23 | 2024-09-27 |  |  | Front dev 3 | 2 |
| 66 | Модальное окно редактирования лабораторной |  | 5d | 2024-09-23 | 2024-09-27 |  |  | Front dev 3 | 1 |
| 67 | Страница просмотра лабораторной |  | 5d | 2024-09-30 | 2024-10-04 |  |  | Front dev 3 | 3 |
| 68 | Страница просмотра лабораторных |  | 5d | 2024-10-07 | 2024-10-11 |  |  | Front dev 3 | 3 |
| 69 | Фаза 2 | milestone | 0d | 2024-11-29 | 2024-11-29 |  |  |  |  |
| 70 | Тесты: доанализ требований 2 |  | 20d | 2024-10-28 | 2024-11-22 |  |  | Test Analyst 1 | 8 |

| ID | Task | Type | Duration | Start | Finish | Predecessors | Resources | Cost |
| --- | --- | --- | --- | --- | --- | --- | --- | --- |
| 71 | Web: доанализ требований 2 |  | 20d | 2024-10-28 | 2024-11-22 |  | Test Analyst 2 | 8 |
| 72 | QA обвязки 1 |  | 10d | 2024-10-28 | 2024-11-08 |  | Manager-QA [50%]; QA [50%] | 15 |
| 73 | QA тестов 2 |  | 10d | 2024-11-11 | 2024-11-22 |  | Manager-QA [50%]; QA [50%] | 15 |
| 74 | Тесты многозадачности |  | 5d | 2024-10-28 | 2024-11-01 |  | Sys dev 3 | 2 |
| 75 | Тесты сети |  | 10d | 2024-10-28 | 2024-11-08 |  | Sys dev 4 | 2 |
| 76 | Тесты кэша |  | 5d | 2024-11-11 | 2024-11-15 |  | Sys dev 3 | 2 |
| 77 | Нагрузочные тесты |  | 10d | 2024-11-04 | 2024-11-15 |  | Sys dev 4 | 6 |
| 78 | Интеграция: нагрузочные тесты |  | 5d | 2024-11-18 | 2024-11-22 |  | Sys dev 1; Sys dev 2; Sys dev 3; Sys dev 4 | 16 |
| 79 | Exec: жесткие ограничения cgroup 1 |  | 15d | 2024-10-28 | 2024-11-15 |  | Sys dev 1 | 6 |
| 80 | Exec: жесткие ограничения cgroup 2 |  | 15d | 2024-10-28 | 2024-11-15 |  | Sys dev 2 | 6 |
| 81 | Часть модального окна создания/редактирования лабораторной - форма выбора тестов |  | 5d | 2024-10-28 | 2024-11-01 | 51, 65, 66 | Front dev 3 | 1 |
| 82 | Страница просмотра попыток сдачи |  | 5d | 2024-11-04 | 2024-11-08 | 63 | Front dev 3 | 2 |
| 83 | Модальное окно загрузки лабораторных |  | 5d | 2024-11-11 | 2024-11-15 |  | Front dev 3 | 2 |
| 84 | Интеграция попыток сдачи |  | 5d | 2024-11-18 | 2024-11-22 |  | Back dev 3; Front dev 3 | 8 |
| 85 | Проверка лабораторной в новой попытке сдачи |  | 10d | 2024-10-28 | 2024-11-08 |  | Back dev 3 | 8 |
| 86 | Создание сессий сдачи |  | 5d | 2024-10-28 | 2024-11-01 |  | Back dev 2 | 2 |
| 87 | Получение сессий сдачи |  | 5d | 2024-11-04 | 2024-11-08 |  | Back dev 2 | 2 |
| 88 | Поиск и фильтрация сессий сдачи |  | 5d | 2024-11-11 | 2024-11-15 |  | Back dev 2 | 2 |
| 89 | Интеграция сессий сдачи |  | 5d | 2024-11-18 | 2024-11-22 |  | Back dev 2; Front dev 2 | 8 |
| 90 | Просмотр сессий сдачи |  | 5d | 2024-10-28 | 2024-11-01 |  | Front dev 2 | 2 |
| 91 | Просмотр сессий сдачи студентов с поиском |  | 5d | 2024-11-04 | 2024-11-08 |  | Front dev 2 | 2 |
| 92 | Модификация страницы просмотра сессии сдачи - для преподавателя |  | 5d | 2024-11-11 | 2024-11-15 |  | Front dev 2 | 1.5 |
| 93 | Личная информация по всем пользователям |  | 5d | 2024-10-28 | 2024-11-01 |  | Back dev 1 | 2 |
| 94 | Личная информация пользователя |  | 5d | 2024-10-28 | 2024-11-01 |  | Back dev 1 | 2 |
| 95 | Создание/редактирование пользователя |  | 5d | 2024-11-04 | 2024-11-08 |  | Back dev 1 | 2 |
| 96 | Создание множества пользователей |  | 5d | 2024-11-11 | 2024-11-15 |  | Back dev 1 | 2 |
| 97 | Интеграция пользователей |  | 5d | 2024-11-18 | 2024-11-22 |  | Back dev 1; Front dev 1 | 8 |
| 98 | Модалки создания редактирования пользователя |  | 5d | 2024-10-28 | 2024-11-01 |  | Front dev 1 | 2 |
| 99 | Экран всех пользователей для админа |  | 5d | 2024-11-04 | 2024-11-08 |  | Front dev 1 | 2 |
| 100 | Переход на экран группы |  | 5d | 2024-11-11 | 2024-11-15 |  | Front dev 1 | 2 |
| 101 | Фаза 3 | milestone | 0d | 2024-12-27 | 2024-12-27 |  |  |  |
| 102 | Тесты: доанализ требований 3 |  | 20d | 2024-12-02 | 2024-12-27 |  | Test Analyst 1 | 8 |
| 103 | Web: доанализ требований 3 |  | 20d | 2024-12-02 | 2024-12-27 |  | Test Analyst 2 | 8 |
| 104 | QA обвязки 2 |  | 10d | 2024-12-02 | 2024-12-13 |  | Manager-QA [50%]; QA [50%] | 15 |
| 105 | Общее QA |  | 10d | 2024-12-16 | 2024-12-27 |  | Manager-QA [50%]; QA [50%] | 15 |
| 106 | Модификация страницы просмотра лабораторных - для студента |  | 5d | 2024-12-02 | 2024-12-06 |  | Front dev 3 | 1.5 |
| 107 | Модификация страницы просмотра лабораторных - для учителя |  | 5d | 2024-12-02 | 2024-12-06 |  | Front dev 3 | 1.5 |
| 108 | Модификация страницы просмотра лабораторной - для студента |  | 5d | 2024-12-09 | 2024-12-13 |  | Front dev 3 | 1.5 |
| 109 | Модификация страницы просмотра лабораторной - для учителя |  | 5d | 2024-12-09 | 2024-12-13 |  | Front dev 3 | 1.5 |
| 110 | Модификация страницы просмотра попытки сдачи - для преподавателя |  | 5d | 2024-12-16 | 2024-12-20 |  | Front dev 3 | 1.5 |
| 111 | Переход к лабораторной по студенту |  | 5d | 2024-12-02 | 2024-12-06 |  | Front dev 2 | 1.5 |
| 112 | Фронт: исправление багов |  | 20d | 2024-12-02 | 2024-12-27 |  | Front dev 1; Front dev 2 | 20 |
| 113 | Бэк: исправление багов |  | 20d | 2024-12-02 | 2024-12-27 |  | Back dev 2; Back dev 3 | 20 |
| 114 | Данные для рейтинговой таблицы |  | 10d | 2024-12-02 | 2024-12-13 |  | Back dev 1 | 10 |
| 115 | Интеграция рейтинговой таблицы |  | 5d | 2024-12-23 | 2024-12-27 |  | Back dev 1; Front dev 1 | 8 |
| 116 | Рейтинговая таблица |  | 10d | 2024-12-02 | 2024-12-13 |  | Front dev 1 | 10 |
| 117 | Сортировки по срезу |  | 5d | 2024-12-16 | 2024-12-20 |  | Front dev 2 | 1.5 |
| 118 | Тесты под valgrind и санитайзерами |  | 10d | 2024-12-02 | 2024-12-13 |  | Sys dev 3 | 6 |
| 119 | Тесты с ограниченными ресурсами |  | 10d | 2024-12-02 | 2024-12-13 |  | Sys dev 4 | 6 |
| 120 | Интеграция: дополнительные тесты |  | 5d | 2024-12-16 | 2024-12-20 |  | Sys dev 1; Sys dev 2; Sys dev 3; Sys dev 4 | 16 |
| 121 | Exec: ограничение fs, mount |  | 10d | 2024-12-02 | 2024-12-13 |  | Sys dev 1 | 6 |
| 122 | Exec: ограничение network workspace |  | 10d | 2024-12-02 | 2024-12-13 |  | Sys dev 2 | 6 |
